# Projeto Gestão de Campanhas

Schedule from MS Project, 2023-02-27 to 2023-07-04, status date 2023-06-06, costs in R$, A marks actual dates.
Senac Rio - SENAC ARRJ

## Calendars

- Senac: Mon-Fri 09:00-12:00, 13:00-18:00; Sat-Sun off. Exceptions (off unless hours are given): 2023-04-21 (Feriado), 2023-06-08 to 2023-06-09 (Feriado).

## Resources

| Resource | Unit | Rate |
| --- | --- | --- |
| Gerente de projeto |  | 60 |
| Scrum Master |  | 40 |
| Desenvolvedor Java Senior |  | 50 |
| Desenvolvedor Java Pleno |  | 40 |
| Desenvolvedor Frontend |  | 30 |
| UX Designer |  | 20 |
| Solução eNotas | Mensalidade | 90.83 |
| Solução Boleto Cloud | Mensalidade | 60 |
| Patrocinador |  |  |
| Product Owner |  |  |

## Schedule

| ID | WBS | Task | Duration | Start | Finish | Predecessors | Complete | Remaining | Baseline start | Baseline finish | Baseline duration | Baseline 1 start | Baseline 1 finish | Total slack | Resources | Work | Actual work | Cost | Baseline cost | Actual cost |
| --- | --- | --- | --- | --- | --- | --- | --- | --- | --- | --- | --- | --- | --- | --- | --- | --- | --- | --- | --- | --- |
| 1 | 1 | **Iniciação** | 3d | 2023-02-27 09:00 A | 2023-03-01 18:00 A |  | 100% |  | 2023-02-27 09:00 | 2023-03-01 18:00 | 3d | 2023-02-27 09:00 | 2023-03-01 18:00 |  |  | 32h | 32h | 1,440 | 1,440 | 1,440 |
| 2 | 1.1 | Identificar as partes interessadas (stakeholders) | 1d | 2023-02-27 09:00 A | 2023-02-27 18:00 A |  | 100% |  | 2023-02-27 09:00 | 2023-02-27 18:00 | 1d | 2023-02-27 09:00 | 2023-02-27 18:00 |  | Gerente de projeto | 8h | 8h | 480 | 480 | 480 |
| 3 | 1.2 | Elaborar o Termo de Abertura do Projeto (TAP) | 1d | 2023-02-28 09:00 A | 2023-02-28 18:00 A | 2 | 100% |  | 2023-02-28 09:00 | 2023-02-28 18:00 | 1d | 2023-02-28 09:00 | 2023-02-28 18:00 |  | Gerente de projeto | 8h | 8h | 480 | 480 | 480 |
| 4 | 1.3 | Aprovar o TAP | 1d | 2023-03-01 09:00 A | 2023-03-01 18:00 A | 3 | 100% |  | 2023-03-01 09:00 | 2023-03-01 18:00 | 1d | 2023-03-01 09:00 | 2023-03-01 18:00 |  | Gerente de projeto; Patrocinador | 16h | 16h | 480 | 480 | 480 |
| 5 | 2 | **Planejamento** | 9d | 2023-03-02 09:00 A | 2023-03-14 18:00 A |  | 100% |  | 2023-03-02 09:00 | 2023-03-14 18:00 | 9d | 2023-03-02 09:00 | 2023-03-14 18:00 |  |  | 144h | 144h | 5,760 | 5,760 | 5,760 |
| 6 | 2.1 | Elaborar o Plano de Projeto | 1d | 2023-03-02 09:00 A | 2023-03-02 18:00 A | 4 | 100% |  | 2023-03-02 09:00 | 2023-03-02 18:00 | 1d | 2023-03-02 09:00 | 2023-03-02 18:00 |  | Gerente de projeto | 8h | 8h | 480 | 480 | 480 |
| 7 | 2.2 | Aprovar o Plano de Projeto | 1d | 2023-03-03 09:00 A | 2023-03-03 18:00 A | 6 | 100% |  | 2023-03-03 09:00 | 2023-03-03 18:00 | 1d | 2023-03-03 09:00 | 2023-03-03 18:00 |  | Gerente de projeto; Patrocinador | 16h | 16h | 480 | 480 | 480 |
| 8 | 2.3 | Realizar reunião Kick off | 1d | 2023-03-06 09:00 A | 2023-03-06 18:00 A | 7 | 100% |  | 2023-03-06 09:00 | 2023-03-06 18:00 | 1d | 2023-03-06 09:00 | 2023-03-06 18:00 |  | Desenvolvedor Frontend; Desenvolvedor Java Pleno; Desenvolvedor Java Senior; Gerente de projeto; Patrocinador; Scrum Master; UX Designer; Product Owner | 64h | 64h | 1,920 | 1,920 | 1,920 |
| 9 | 2.4 | Preparar estrutura para a equipe | 3d | 2023-03-07 09:00 A | 2023-03-09 18:00 A | 8 | 100% |  | 2023-03-07 09:00 | 2023-03-09 18:00 | 3d | 2023-03-07 09:00 | 2023-03-09 18:00 |  | Gerente de projeto | 24h | 24h | 1,440 | 1,440 | 1,440 |
| 10 | 2.5 | Realizar contratações | 2d | 2023-03-10 09:00 A | 2023-03-13 18:00 A | 9 | 100% |  | 2023-03-10 09:00 | 2023-03-13 18:00 | 2d | 2023-03-10 09:00 | 2023-03-13 18:00 |  | Gerente de projeto | 16h | 16h | 960 | 960 | 960 |
| 11 | 2.6 | Elaborar e priorizar o Backlog do Produto (Product Backlog) | 1d | 2023-03-14 09:00 A | 2023-03-14 18:00 A | 10 | 100% |  | 2023-03-14 09:00 | 2023-03-14 18:00 | 1d | 2023-03-14 09:00 | 2023-03-14 18:00 |  | Gerente de projeto; Product Owner | 16h | 16h | 480 | 480 | 480 |
| 12 | 3 | **Execução** | 76d | 2023-03-15 09:00 A | 2023-07-03 18:00 |  | 63% | 28.15d | 2023-03-15 09:00 | 2023-05-22 18:00 | 48d | 2023-03-15 09:00 | 2023-07-03 18:00 | 0d |  | 2192h | 1385.6h | 84,480 | 84,480 | 53,184 |
| 13 | 3.1 | **Sprint 1** | 9d | 2023-03-15 09:00 A | 2023-03-27 18:00 A |  | 100% |  | 2023-03-15 09:00 | 2023-03-27 18:00 | 9d | 2023-03-15 09:00 | 2023-03-27 18:00 |  |  | 448h | 448h | 17,280 | 17,280 | 17,280 |
| 14 | 3.1.1 | Planejar a Sprint (Sprint Planning) | 1d | 2023-03-15 09:00 A | 2023-03-15 18:00 A | 11 | 100% |  | 2023-03-15 09:00 | 2023-03-15 18:00 | 1d | 2023-03-15 09:00 | 2023-03-15 18:00 |  | Desenvolvedor Frontend; Desenvolvedor Java Pleno; Desenvolvedor Java Senior; Gerente de projeto; Product Owner; Scrum Master; UX Designer | 56h | 56h | 1,920 | 1,920 | 1,920 |
| 15 | 3.1.2 | Executar a sprint | 7d | 2023-03-16 09:00 A | 2023-03-24 18:00 A | 14 | 100% |  | 2023-03-16 09:00 | 2023-03-24 18:00 | 7d | 2023-03-16 09:00 | 2023-03-24 18:00 |  | Desenvolvedor Frontend; Desenvolvedor Java Pleno; Desenvolvedor Java Senior; Gerente de projeto; Scrum Master; UX Designer | 336h | 336h | 13,440 | 13,440 | 13,440 |
| 16 | 3.1.3 | Revisão da Sprint (Sprint Review) | 4h | 2023-03-27 09:00 A | 2023-03-27 14:00 A | 15 | 100% |  | 2023-03-27 09:00 | 2023-03-27 14:00 | 4h | 2023-03-27 09:00 | 2023-03-27 14:00 |  | Desenvolvedor Frontend; Desenvolvedor Java Pleno; Desenvolvedor Java Senior; Gerente de projeto; Product Owner; Scrum Master; UX Designer | 28h | 28h | 960 | 960 | 960 |
| 17 | 3.1.4 | Retrospectiva da Sprint (Sprint Retrospective) | 4h | 2023-03-27 14:00 A | 2023-03-27 18:00 A | 16 | 100% |  | 2023-03-27 14:00 | 2023-03-27 18:00 | 4h | 2023-03-27 14:00 | 2023-03-27 18:00 |  | Desenvolvedor Frontend; Desenvolvedor Java Pleno; Desenvolvedor Java Senior; Gerente de projeto; Product Owner; Scrum Master; UX Designer | 28h | 28h | 960 | 960 | 960 |
| 18 | 3.2 | **Sprint 2** | 9d | 2023-03-29 09:00 A | 2023-04-10 18:00 A |  | 100% |  | 2023-03-29 09:00 | 2023-04-10 18:00 | 9d | 2023-03-29 09:00 | 2023-04-10 18:00 |  |  | 448h | 448h | 17,280 | 17,280 | 17,280 |
| 19 | 3.2.1 | Planejar a Sprint (Sprint Planning) | 1d | 2023-03-29 09:00 A | 2023-03-29 18:00 A | 17FS+1d | 100% |  | 2023-03-29 09:00 | 2023-03-29 18:00 | 1d | 2023-03-29 09:00 | 2023-03-29 18:00 |  | Desenvolvedor Java Pleno; Desenvolvedor Java Senior; Gerente de projeto; Product Owner; Scrum Master; UX Designer; Desenvolvedor Frontend | 56h | 56h | 1,920 | 1,920 | 1,920 |
| 20 | 3.2.2 | Executar a sprint | 7d | 2023-03-30 09:00 A | 2023-04-07 18:00 A | 19 | 100% |  | 2023-03-30 09:00 | 2023-04-07 18:00 | 7d | 2023-03-30 09:00 | 2023-04-07 18:00 |  | Desenvolvedor Frontend; Desenvolvedor Java Pleno; Desenvolvedor Java Senior; Gerente de projeto; Scrum Master; UX Designer | 336h | 336h | 13,440 | 13,440 | 13,440 |
| 21 | 3.2.3 | Revisão da Sprint (Sprint Review) | 4h | 2023-04-10 09:00 A | 2023-04-10 14:00 A | 20 | 100% |  | 2023-04-10 09:00 | 2023-04-10 14:00 | 4h | 2023-04-10 09:00 | 2023-04-10 14:00 |  | Desenvolvedor Frontend; Desenvolvedor Java Pleno; Desenvolvedor Java Senior; Gerente de projeto; Product Owner; Scrum Master; UX Designer | 28h | 28h | 960 | 960 | 960 |
| 22 | 3.2.4 | Retrospectiva da Sprint (Sprint Retrospective) | 4h | 2023-04-10 14:00 A | 2023-04-10 18:00 A | 21 | 100% |  | 2023-04-10 14:00 | 2023-04-10 18:00 | 4h | 2023-04-10 14:00 | 2023-04-10 18:00 |  | Desenvolvedor Frontend; Desenvolvedor Java Pleno; Desenvolvedor Java Senior; Gerente de projeto; Product Owner; Scrum Master; UX Designer | 28h | 28h | 960 | 960 | 960 |
| 23 | 3.3 | **Sprint 3** | 8d | 2023-04-12 09:00 A | 2023-04-24 18:00 A |  | 100% |  | 2023-04-12 09:00 | 2023-04-24 18:00 | 8d | 2023-04-12 09:00 | 2023-04-24 18:00 |  |  | 400h | 400h | 15,360 | 15,360 | 15,360 |
| 24 | 3.3.1 | Planejar a Sprint (Sprint Planning) | 1d | 2023-04-12 09:00 A | 2023-04-12 18:00 A | 22FS+1d | 100% |  | 2023-04-12 09:00 | 2023-04-12 18:00 | 1d | 2023-04-12 09:00 | 2023-04-12 18:00 |  | Desenvolvedor Frontend; Desenvolvedor Java Pleno; Desenvolvedor Java Senior; Gerente de projeto; Product Owner; Scrum Master; UX Designer | 56h | 56h | 1,920 | 1,920 | 1,920 |
| 25 | 3.3.2 | Executar a sprint | 6d | 2023-04-13 09:00 A | 2023-04-20 18:00 A | 24 | 100% |  | 2023-04-13 09:00 | 2023-04-20 18:00 | 6d | 2023-04-13 09:00 | 2023-04-20 18:00 |  | Desenvolvedor Frontend; Desenvolvedor Java Pleno; Desenvolvedor Java Senior; Gerente de projeto; Scrum Master; UX Designer | 288h | 288h | 11,520 | 11,520 | 11,520 |
| 26 | 3.3.3 | Revisão da Sprint (Sprint Review) | 4h | 2023-04-24 09:00 A | 2023-04-24 14:00 A | 25 | 100% |  | 2023-04-24 09:00 | 2023-04-24 14:00 | 4h | 2023-04-24 09:00 | 2023-04-24 14:00 |  | Desenvolvedor Frontend; Desenvolvedor Java Pleno; Desenvolvedor Java Senior; Gerente de projeto; Product Owner; Scrum Master; UX Designer | 28h | 28h | 960 | 960 | 960 |
| 27 | 3.3.4 | Retrospectiva da Sprint (Sprint Retrospective) | 4h | 2023-04-24 14:00 A | 2023-04-24 18:00 A | 26 | 100% |  | 2023-04-24 14:00 | 2023-04-24 18:00 | 4h | 2023-04-24 14:00 | 2023-04-24 18:00 |  | Desenvolvedor Frontend; Desenvolvedor Java Pleno; Desenvolvedor Java Senior; Gerente de projeto; Product Owner; Scrum Master; UX Designer | 28h | 28h | 960 | 960 | 960 |

Notes:
- 1: Critério de aceitação: / O TAP precisa estar aprovado pelo gerente de projeto e pelo patrocinador.
- 5: Critério de aceitação: / O Plano de Projeto precisa estar aprovado pelo gerente de projeto e pelo patrocinador.

| ID | WBS | Task | Duration | Start | Finish | Predecessors | Complete | Remaining | Baseline start | Baseline finish | Baseline duration | Baseline 1 start | Baseline 1 finish | Total slack | Constraint | Resources | Work | Actual work | Cost | Baseline cost | Actual cost |
| --- | --- | --- | --- | --- | --- | --- | --- | --- | --- | --- | --- | --- | --- | --- | --- | --- | --- | --- | --- | --- | --- |
| 28 | 3.4 | **Sprint 4** | 9d | 2023-06-05 09:00 A | 2023-06-19 18:00 |  | 19% | 7.3d | 2023-04-26 09:00 | 2023-05-08 18:00 | 9d | 2023-06-05 09:00 | 2023-06-19 18:00 | 0d |  |  | 448h | 89.6h | 17,280 | 17,280 | 3,264 |
| 29 | 3.4.1 | Planejar a Sprint (Sprint Planning) | 1d | 2023-06-05 09:00 A | 2023-06-05 18:00 A | 27FS+1d | 100% |  | 2023-04-26 09:00 | 2023-04-26 18:00 | 1d | 2023-06-05 09:00 | 2023-06-05 18:00 |  | must start on 2023-06-05 09:00 | Desenvolvedor Frontend; Desenvolvedor Java Pleno; Desenvolvedor Java Senior; Gerente de projeto; Product Owner; Scrum Master; UX Designer | 56h | 56h | 1,920 | 1,920 | 1,920 |
| 30 | 3.4.2 | Executar a sprint | 7d | 2023-06-06 09:00 A | 2023-06-16 18:00 | 29 | 10% | 6.3d | 2023-04-27 09:00 | 2023-05-05 18:00 | 7d | 2023-06-06 09:00 | 2023-06-16 18:00 | 0d |  | Desenvolvedor Frontend; Desenvolvedor Java Pleno; Desenvolvedor Java Senior; Gerente de projeto; Scrum Master; UX Designer | 336h | 33.6h | 13,440 | 13,440 | 1,344 |
| 31 | 3.4.3 | Revisão da Sprint (Sprint Review) | 4h | 2023-06-19 09:00 | 2023-06-19 14:00 | 30 |  |  | 2023-05-08 09:00 | 2023-05-08 14:00 | 4h | 2023-06-19 09:00 | 2023-06-19 14:00 | 0d |  | Desenvolvedor Frontend; Desenvolvedor Java Pleno; Desenvolvedor Java Senior; Gerente de projeto; Product Owner; Scrum Master; UX Designer | 28h |  | 960 | 960 |  |
| 32 | 3.4.4 | Retrospectiva da Sprint (Sprint Retrospective) | 4h | 2023-06-19 14:00 | 2023-06-19 18:00 | 31 |  |  | 2023-05-08 14:00 | 2023-05-08 18:00 | 4h | 2023-06-19 14:00 | 2023-06-19 18:00 | 0d |  | Desenvolvedor Frontend; Desenvolvedor Java Pleno; Desenvolvedor Java Senior; Gerente de projeto; Product Owner; Scrum Master; UX Designer | 28h |  | 960 | 960 |  |
| 33 | 3.5 | **Sprint 5** | 9d | 2023-06-21 09:00 | 2023-07-03 18:00 |  |  |  | 2023-05-10 09:00 | 2023-05-22 18:00 | 9d | 2023-06-21 09:00 | 2023-07-03 18:00 | 0d |  |  | 448h |  | 17,280 | 17,280 |  |
| 34 | 3.5.1 | Planejar a Sprint (Sprint Planning) | 1d | 2023-06-21 09:00 | 2023-06-21 18:00 | 32FS+1d |  |  | 2023-05-10 09:00 | 2023-05-10 18:00 | 1d | 2023-06-21 09:00 | 2023-06-21 18:00 | 0d |  | Desenvolvedor Frontend; Desenvolvedor Java Pleno; Desenvolvedor Java Senior; Gerente de projeto; Product Owner; Scrum Master; UX Designer | 56h |  | 1,920 | 1,920 |  |
| 35 | 3.5.2 | Executar a sprint | 7d | 2023-06-22 09:00 | 2023-06-30 18:00 | 34 |  |  | 2023-05-11 09:00 | 2023-05-19 18:00 | 7d | 2023-06-22 09:00 | 2023-06-30 18:00 | 0d |  | Desenvolvedor Frontend; Desenvolvedor Java Pleno; Desenvolvedor Java Senior; Gerente de projeto; Scrum Master; UX Designer | 336h |  | 13,440 | 13,440 |  |
| 36 | 3.5.3 | Revisão da Sprint (Sprint Review) | 4h | 2023-07-03 09:00 | 2023-07-03 14:00 | 35 |  |  | 2023-05-22 09:00 | 2023-05-22 14:00 | 4h | 2023-07-03 09:00 | 2023-07-03 14:00 | 0d |  | Desenvolvedor Frontend; Desenvolvedor Java Pleno; Desenvolvedor Java Senior; Gerente de projeto; Product Owner; Scrum Master; UX Designer | 28h |  | 960 | 960 |  |
| 37 | 3.5.4 | Retrospectiva da Sprint (Sprint Retrospective) | 4h | 2023-07-03 14:00 | 2023-07-03 18:00 | 36 |  |  | 2023-05-22 14:00 | 2023-05-22 18:00 | 4h | 2023-07-03 14:00 | 2023-07-03 18:00 | 0d |  | Desenvolvedor Frontend; Desenvolvedor Java Pleno; Desenvolvedor Java Senior; Gerente de projeto; Product Owner; Scrum Master; UX Designer | 28h |  | 960 | 960 |  |
| 38 | 4 | **Controle** | 47.12d | 2023-03-15 09:00 A | 2023-05-22 10:00 A |  | 100% |  | 2023-03-15 09:00 | 2023-05-22 10:00 | 47.12d | 2023-03-15 09:00 | 2023-05-22 10:00 |  |  |  | 145h | 145h | 5,800 | 5,800 | 5,800 |
| 39 | 4.1 | **Controlar comunicação** | 44.12d | 2023-03-20 09:00 A | 2023-05-22 10:00 A |  | 100% |  | 2023-03-20 09:00 | 2023-05-22 10:00 | 44.12d | 2023-03-20 09:00 | 2023-05-22 10:00 |  |  |  | 50h | 50h | 2,000 | 2,000 | 2,000 |
| 40 | 4.1.1 | Controlar comunicação 1 | 1h | 2023-03-20 09:00 A | 2023-03-20 10:00 A |  | 100% |  | 2023-03-20 09:00 | 2023-03-20 10:00 | 1h | 2023-03-20 09:00 | 2023-03-20 10:00 |  | start no earlier than 2023-03-20 09:00 | Desenvolvedor Frontend; Desenvolvedor Java Pleno; Desenvolvedor Java Senior; Gerente de projeto; UX Designer | 5h | 5h | 200 | 200 | 200 |
| 41 | 4.1.2 | Controlar comunicação 2 | 1h | 2023-03-27 09:00 A | 2023-03-27 10:00 A |  | 100% |  | 2023-03-27 09:00 | 2023-03-27 10:00 | 1h | 2023-03-27 09:00 | 2023-03-27 10:00 |  | start no earlier than 2023-03-27 09:00 | Desenvolvedor Frontend; Desenvolvedor Java Pleno; Desenvolvedor Java Senior; Gerente de projeto; UX Designer | 5h | 5h | 200 | 200 | 200 |
| 42 | 4.1.3 | Controlar comunicação 3 | 1h | 2023-04-03 09:00 A | 2023-04-03 10:00 A |  | 100% |  | 2023-04-03 09:00 | 2023-04-03 10:00 | 1h | 2023-04-03 09:00 | 2023-04-03 10:00 |  | start no earlier than 2023-04-03 09:00 | Desenvolvedor Frontend; Desenvolvedor Java Pleno; Desenvolvedor Java Senior; Gerente de projeto; UX Designer | 5h | 5h | 200 | 200 | 200 |
| 43 | 4.1.4 | Controlar comunicação 4 | 1h | 2023-04-10 09:00 A | 2023-04-10 10:00 A |  | 100% |  | 2023-04-10 09:00 | 2023-04-10 10:00 | 1h | 2023-04-10 09:00 | 2023-04-10 10:00 |  | start no earlier than 2023-04-10 09:00 | Desenvolvedor Frontend; Desenvolvedor Java Pleno; Desenvolvedor Java Senior; Gerente de projeto; UX Designer | 5h | 5h | 200 | 200 | 200 |
| 44 | 4.1.5 | Controlar comunicação 5 | 1h | 2023-04-17 09:00 A | 2023-04-17 10:00 A |  | 100% |  | 2023-04-17 09:00 | 2023-04-17 10:00 | 1h | 2023-04-17 09:00 | 2023-04-17 10:00 |  | start no earlier than 2023-04-17 09:00 | Desenvolvedor Frontend; Desenvolvedor Java Pleno; Desenvolvedor Java Senior; Gerente de projeto; UX Designer | 5h | 5h | 200 | 200 | 200 |
| 45 | 4.1.6 | Controlar comunicação 6 | 1h | 2023-04-24 09:00 A | 2023-04-24 10:00 A |  | 100% |  | 2023-04-24 09:00 | 2023-04-24 10:00 | 1h | 2023-04-24 09:00 | 2023-04-24 10:00 |  | start no earlier than 2023-04-24 09:00 | Desenvolvedor Frontend; Desenvolvedor Java Pleno; Desenvolvedor Java Senior; Gerente de projeto; UX Designer | 5h | 5h | 200 | 200 | 200 |
| 46 | 4.1.7 | Controlar comunicação 7 | 1h | 2023-05-01 09:00 A | 2023-05-01 10:00 A |  | 100% |  | 2023-05-01 09:00 | 2023-05-01 10:00 | 1h | 2023-05-01 09:00 | 2023-05-01 10:00 |  | start no earlier than 2023-05-01 09:00 | Desenvolvedor Frontend; Desenvolvedor Java Pleno; Desenvolvedor Java Senior; Gerente de projeto; UX Designer | 5h | 5h | 200 | 200 | 200 |
| 47 | 4.1.8 | Controlar comunicação 8 | 1h | 2023-05-08 09:00 A | 2023-05-08 10:00 A |  | 100% |  | 2023-05-08 09:00 | 2023-05-08 10:00 | 1h | 2023-05-08 09:00 | 2023-05-08 10:00 |  | start no earlier than 2023-05-08 09:00 | Desenvolvedor Frontend; Desenvolvedor Java Pleno; Desenvolvedor Java Senior; Gerente de projeto; UX Designer | 5h | 5h | 200 | 200 | 200 |
| 48 | 4.1.9 | Controlar comunicação 9 | 1h | 2023-05-15 09:00 A | 2023-05-15 10:00 A |  | 100% |  | 2023-05-15 09:00 | 2023-05-15 10:00 | 1h | 2023-05-15 09:00 | 2023-05-15 10:00 |  | start no earlier than 2023-05-15 09:00 | Desenvolvedor Frontend; Desenvolvedor Java Pleno; Desenvolvedor Java Senior; Gerente de projeto; UX Designer | 5h | 5h | 200 | 200 | 200 |
| 49 | 4.1.10 | Controlar comunicação 10 | 1h | 2023-05-22 09:00 A | 2023-05-22 10:00 A |  | 100% |  | 2023-05-22 09:00 | 2023-05-22 10:00 | 1h | 2023-05-22 09:00 | 2023-05-22 10:00 |  | start no earlier than 2023-05-22 09:00 | Desenvolvedor Frontend; Desenvolvedor Java Pleno; Desenvolvedor Java Senior; Gerente de projeto; UX Designer | 5h | 5h | 200 | 200 | 200 |
| 50 | 4.2 | **Controlar o cronograma** | 39.12d | 2023-03-21 09:00 A | 2023-05-16 10:00 A |  | 100% |  | 2023-03-21 09:00 | 2023-05-16 10:00 | 39.12d | 2023-03-21 09:00 | 2023-05-16 10:00 |  |  |  | 45h | 45h | 1,800 | 1,800 | 1,800 |
| 51 | 4.2.1 | Controlar o cronograma 1 | 1h | 2023-03-21 09:00 A | 2023-03-21 10:00 A |  | 100% |  | 2023-03-21 09:00 | 2023-03-21 10:00 | 1h | 2023-03-21 09:00 | 2023-03-21 10:00 |  | start no earlier than 2023-03-21 09:00 | Desenvolvedor Frontend; Desenvolvedor Java Pleno; Desenvolvedor Java Senior; Gerente de projeto; UX Designer | 5h | 5h | 200 | 200 | 200 |
| 52 | 4.2.2 | Controlar o cronograma 2 | 1h | 2023-03-28 09:00 A | 2023-03-28 10:00 A |  | 100% |  | 2023-03-28 09:00 | 2023-03-28 10:00 | 1h | 2023-03-28 09:00 | 2023-03-28 10:00 |  | start no earlier than 2023-03-28 09:00 | Desenvolvedor Frontend; Desenvolvedor Java Pleno; Desenvolvedor Java Senior; Gerente de projeto; UX Designer | 5h | 5h | 200 | 200 | 200 |
| 53 | 4.2.3 | Controlar o cronograma 3 | 1h | 2023-04-04 09:00 A | 2023-04-04 10:00 A |  | 100% |  | 2023-04-04 09:00 | 2023-04-04 10:00 | 1h | 2023-04-04 09:00 | 2023-04-04 10:00 |  | start no earlier than 2023-04-04 09:00 | Desenvolvedor Frontend; Desenvolvedor Java Pleno; Desenvolvedor Java Senior; Gerente de projeto; UX Designer | 5h | 5h | 200 | 200 | 200 |
| 54 | 4.2.4 | Controlar o cronograma 4 | 1h | 2023-04-11 09:00 A | 2023-04-11 10:00 A |  | 100% |  | 2023-04-11 09:00 | 2023-04-11 10:00 | 1h | 2023-04-11 09:00 | 2023-04-11 10:00 |  | start no earlier than 2023-04-11 09:00 | Desenvolvedor Frontend; Desenvolvedor Java Pleno; Desenvolvedor Java Senior; Gerente de projeto; UX Designer | 5h | 5h | 200 | 200 | 200 |
| 55 | 4.2.5 | Controlar o cronograma 5 | 1h | 2023-04-18 09:00 A | 2023-04-18 10:00 A |  | 100% |  | 2023-04-18 09:00 | 2023-04-18 10:00 | 1h | 2023-04-18 09:00 | 2023-04-18 10:00 |  | start no earlier than 2023-04-18 09:00 | Desenvolvedor Frontend; Desenvolvedor Java Pleno; Desenvolvedor Java Senior; Gerente de projeto; UX Designer | 5h | 5h | 200 | 200 | 200 |
| 56 | 4.2.6 | Controlar o cronograma 6 | 1h | 2023-04-25 09:00 A | 2023-04-25 10:00 A |  | 100% |  | 2023-04-25 09:00 | 2023-04-25 10:00 | 1h | 2023-04-25 09:00 | 2023-04-25 10:00 |  | start no earlier than 2023-04-25 09:00 | Desenvolvedor Frontend; Desenvolvedor Java Pleno; Desenvolvedor Java Senior; Gerente de projeto; UX Designer | 5h | 5h | 200 | 200 | 200 |
| 57 | 4.2.7 | Controlar o cronograma 7 | 1h | 2023-05-02 09:00 A | 2023-05-02 10:00 A |  | 100% |  | 2023-05-02 09:00 | 2023-05-02 10:00 | 1h | 2023-05-02 09:00 | 2023-05-02 10:00 |  | start no earlier than 2023-05-02 09:00 | Desenvolvedor Frontend; Desenvolvedor Java Pleno; Desenvolvedor Java Senior; Gerente de projeto; UX Designer | 5h | 5h | 200 | 200 | 200 |
| 58 | 4.2.8 | Controlar o cronograma 8 | 1h | 2023-05-09 09:00 A | 2023-05-09 10:00 A |  | 100% |  | 2023-05-09 09:00 | 2023-05-09 10:00 | 1h | 2023-05-09 09:00 | 2023-05-09 10:00 |  | start no earlier than 2023-05-09 09:00 | Desenvolvedor Frontend; Desenvolvedor Java Pleno; Desenvolvedor Java Senior; Gerente de projeto; UX Designer | 5h | 5h | 200 | 200 | 200 |
| 59 | 4.2.9 | Controlar o cronograma 9 | 1h | 2023-05-16 09:00 A | 2023-05-16 10:00 A |  | 100% |  | 2023-05-16 09:00 | 2023-05-16 10:00 | 1h | 2023-05-16 09:00 | 2023-05-16 10:00 |  | start no earlier than 2023-05-16 09:00 | Desenvolvedor Frontend; Desenvolvedor Java Pleno; Desenvolvedor Java Senior; Gerente de projeto; UX Designer | 5h | 5h | 200 | 200 | 200 |

| ID | WBS | Task | Duration | Start | Finish | Predecessors | Complete | Baseline start | Baseline finish | Baseline duration | Baseline 1 start | Baseline 1 finish | Total slack | Constraint | Resources | Work | Actual work | Cost | Baseline cost | Actual cost |
| --- | --- | --- | --- | --- | --- | --- | --- | --- | --- | --- | --- | --- | --- | --- | --- | --- | --- | --- | --- | --- |
| 60 | 4.3 | **Controlar riscos** | 44.12d | 2023-03-15 09:00 A | 2023-05-17 10:00 A |  | 100% | 2023-03-15 09:00 | 2023-05-17 10:00 | 44.12d | 2023-03-15 09:00 | 2023-05-17 10:00 |  |  |  | 50h | 50h | 2,000 | 2,000 | 2,000 |
| 61 | 4.3.1 | Controlar riscos 1 | 1h | 2023-03-15 09:00 A | 2023-03-15 10:00 A |  | 100% | 2023-03-15 09:00 | 2023-03-15 10:00 | 1h | 2023-03-15 09:00 | 2023-03-15 10:00 |  | start no earlier than 2023-03-15 09:00 | Desenvolvedor Frontend; Desenvolvedor Java Pleno; Desenvolvedor Java Senior; Gerente de projeto; UX Designer | 5h | 5h | 200 | 200 | 200 |
| 62 | 4.3.2 | Controlar riscos 2 | 1h | 2023-03-22 09:00 A | 2023-03-22 10:00 A |  | 100% | 2023-03-22 09:00 | 2023-03-22 10:00 | 1h | 2023-03-22 09:00 | 2023-03-22 10:00 |  | start no earlier than 2023-03-22 09:00 | Desenvolvedor Frontend; Desenvolvedor Java Pleno; Desenvolvedor Java Senior; Gerente de projeto; UX Designer | 5h | 5h | 200 | 200 | 200 |
| 63 | 4.3.3 | Controlar riscos 3 | 1h | 2023-03-29 09:00 A | 2023-03-29 10:00 A |  | 100% | 2023-03-29 09:00 | 2023-03-29 10:00 | 1h | 2023-03-29 09:00 | 2023-03-29 10:00 |  | start no earlier than 2023-03-29 09:00 | Desenvolvedor Frontend; Desenvolvedor Java Pleno; Desenvolvedor Java Senior; Gerente de projeto; UX Designer | 5h | 5h | 200 | 200 | 200 |
| 64 | 4.3.4 | Controlar riscos 4 | 1h | 2023-04-05 09:00 A | 2023-04-05 10:00 A |  | 100% | 2023-04-05 09:00 | 2023-04-05 10:00 | 1h | 2023-04-05 09:00 | 2023-04-05 10:00 |  | start no earlier than 2023-04-05 09:00 | Desenvolvedor Frontend; Desenvolvedor Java Pleno; Desenvolvedor Java Senior; Gerente de projeto; UX Designer | 5h | 5h | 200 | 200 | 200 |
| 65 | 4.3.5 | Controlar riscos 5 | 1h | 2023-04-12 09:00 A | 2023-04-12 10:00 A |  | 100% | 2023-04-12 09:00 | 2023-04-12 10:00 | 1h | 2023-04-12 09:00 | 2023-04-12 10:00 |  | start no earlier than 2023-04-12 09:00 | Desenvolvedor Frontend; Desenvolvedor Java Pleno; Desenvolvedor Java Senior; Gerente de projeto; UX Designer | 5h | 5h | 200 | 200 | 200 |
| 66 | 4.3.6 | Controlar riscos 6 | 1h | 2023-04-19 09:00 A | 2023-04-19 10:00 A |  | 100% | 2023-04-19 09:00 | 2023-04-19 10:00 | 1h | 2023-04-19 09:00 | 2023-04-19 10:00 |  | start no earlier than 2023-04-19 09:00 | Desenvolvedor Frontend; Desenvolvedor Java Pleno; Desenvolvedor Java Senior; Gerente de projeto; UX Designer | 5h | 5h | 200 | 200 | 200 |
| 67 | 4.3.7 | Controlar riscos 7 | 1h | 2023-04-26 09:00 A | 2023-04-26 10:00 A |  | 100% | 2023-04-26 09:00 | 2023-04-26 10:00 | 1h | 2023-04-26 09:00 | 2023-04-26 10:00 |  | start no earlier than 2023-04-26 09:00 | Desenvolvedor Frontend; Desenvolvedor Java Pleno; Desenvolvedor Java Senior; Gerente de projeto; UX Designer | 5h | 5h | 200 | 200 | 200 |
| 68 | 4.3.8 | Controlar riscos 8 | 1h | 2023-05-03 09:00 A | 2023-05-03 10:00 A |  | 100% | 2023-05-03 09:00 | 2023-05-03 10:00 | 1h | 2023-05-03 09:00 | 2023-05-03 10:00 |  | start no earlier than 2023-05-03 09:00 | Desenvolvedor Frontend; Desenvolvedor Java Pleno; Desenvolvedor Java Senior; Gerente de projeto; UX Designer | 5h | 5h | 200 | 200 | 200 |
| 69 | 4.3.9 | Controlar riscos 9 | 1h | 2023-05-10 09:00 A | 2023-05-10 10:00 A |  | 100% | 2023-05-10 09:00 | 2023-05-10 10:00 | 1h | 2023-05-10 09:00 | 2023-05-10 10:00 |  | start no earlier than 2023-05-10 09:00 | Desenvolvedor Frontend; Desenvolvedor Java Pleno; Desenvolvedor Java Senior; Gerente de projeto; UX Designer | 5h | 5h | 200 | 200 | 200 |
| 70 | 4.3.10 | Controlar riscos 10 | 1h | 2023-05-17 09:00 A | 2023-05-17 10:00 A |  | 100% | 2023-05-17 09:00 | 2023-05-17 10:00 | 1h | 2023-05-17 09:00 | 2023-05-17 10:00 |  | start no earlier than 2023-05-17 09:00 | Desenvolvedor Frontend; Desenvolvedor Java Pleno; Desenvolvedor Java Senior; Gerente de projeto; UX Designer | 5h | 5h | 200 | 200 | 200 |
| 71 | 5 | **Encerramento** | 89d | 2023-02-27 09:00 | 2023-07-04 18:00 |  |  | 2023-05-23 09:00 | 2023-05-24 18:00 | 2d | 2023-07-04 09:00 | 2023-07-05 18:00 | 0d |  |  | 1288h |  | 38,880 | 960 |  |
| 72 | 5.1 | Elaborar o Termo de Encerramento do Projeto | 1d | 2023-07-04 09:00 | 2023-07-04 18:00 | 12 |  | 2023-05-23 09:00 | 2023-05-23 18:00 | 1d | 2023-07-04 09:00 | 2023-07-04 18:00 | 0d |  | Gerente de projeto | 8h |  | 480 | 480 |  |
| 73 | 5.2 | Aprovar o Termo de Encerramento do Projeto | 80d | 2023-02-27 09:00 | 2023-06-21 18:00 | 72 |  | 2023-05-24 09:00 | 2023-05-24 18:00 | 1d | 2023-07-05 09:00 | 2023-07-05 18:00 | 9d |  | Gerente de projeto; Patrocinador | 1280h |  | 38,400 | 480 |  |

Notes:
- 71: Critério de aceitação: / O Termo de Encerramento precisa estar aprovado pelo gerente de projeto e pelo patrocinador.
