# daniel_abreu_dantas_acme

Schedule from MS Project, 2023-04-03 to 2023-11-24, status date 2023-11-25, costs in R$, A marks actual dates.
Senac Rio - SENAC ARRJ

## Calendars

- Padrão: Mon-Fri 09:00-12:00, 13:00-18:00; Sat-Sun off. Exceptions (off unless hours are given): 2023-04-21 (Não útil), 2023-05-01 (Não útil), 2023-06-08 (Não útil).

## Resources

| Resource | Rate |
| --- | --- |
| Gerente - Daniel Abreu Dantas | 100 |
| Consultor - módulo FI | 100 |
| Consultor - módulo MM | 100 |
| Consultor - módulo SD | 100 |

## Schedule

| ID | WBS | Task | Duration | Start | Finish | Predecessors | Complete | Remaining | Baseline start | Baseline finish | Baseline duration | Total slack | Resources | Work | Actual work | Cost | Baseline cost | Actual cost |
| --- | --- | --- | --- | --- | --- | --- | --- | --- | --- | --- | --- | --- | --- | --- | --- | --- | --- | --- |
| 1 | 1 | **Projeto ACME** | 167d | 2023-04-03 A | 2023-11-24 |  | 35% | 108.06d | 2023-04-03 | 2023-11-24 | 167d | 0d |  | 3200h | 960h | 320,000 | 320,000 | 96,000 |
| 2 | 1.1 | **Desenvolvimento** | 137d | 2023-04-03 A | 2023-10-13 |  | 43% | 78.29d | 2023-04-03 | 2023-10-13 | 137d | 0d |  | 2240h | 960h | 224,000 | 224,000 | 96,000 |
| 3 | 1.1.1 | **FI** | 57d | 2023-04-03 A | 2023-06-23 A |  | 100% |  | 2023-04-03 | 2023-06-23 | 57d |  |  | 960h | 960h | 96,000 | 96,000 | 96,000 |
| 4 | 1.1.1.1 | **Plano de contas** | 19d | 2023-04-03 A | 2023-04-28 A |  | 100% |  | 2023-04-03 | 2023-04-28 | 19d |  |  | 320h | 320h | 32,000 | 32,000 | 32,000 |
| 5 | 1.1.1.1.1 | Levantamento | 5d | 2023-04-03 A | 2023-04-07 A |  | 100% |  | 2023-04-03 | 2023-04-07 | 5d |  | Gerente - Daniel Abreu Dantas; Consultor - módulo FI | 80h | 80h | 8,000 | 8,000 | 8,000 |
| 6 | 1.1.1.1.2 | Configuração | 5d | 2023-04-10 A | 2023-04-14 A | 5 | 100% |  | 2023-04-10 | 2023-04-14 | 5d |  | Gerente - Daniel Abreu Dantas; Consultor - módulo FI | 80h | 80h | 8,000 | 8,000 | 8,000 |
| 7 | 1.1.1.1.3 | Testes | 5d | 2023-04-17 A | 2023-04-21 A | 6 | 100% |  | 2023-04-17 | 2023-04-21 | 5d |  | Gerente - Daniel Abreu Dantas; Consultor - módulo FI | 80h | 80h | 8,000 | 8,000 | 8,000 |
| 8 | 1.1.1.1.4 | Validação | 5d | 2023-04-24 A | 2023-04-28 A | 7 | 100% |  | 2023-04-24 | 2023-04-28 | 5d |  | Gerente - Daniel Abreu Dantas; Consultor - módulo FI | 80h | 80h | 8,000 | 8,000 | 8,000 |
| 9 | 1.1.1.2 | **Contas a pagar** | 19d | 2023-05-01 A | 2023-05-26 A |  | 100% |  | 2023-05-01 | 2023-05-26 | 19d |  |  | 320h | 320h | 32,000 | 32,000 | 32,000 |
| 10 | 1.1.1.2.1 | Levantamento | 5d | 2023-05-01 A | 2023-05-05 A | 8 | 100% |  | 2023-05-01 | 2023-05-05 | 5d |  | Gerente - Daniel Abreu Dantas; Consultor - módulo FI | 80h | 80h | 8,000 | 8,000 | 8,000 |
| 11 | 1.1.1.2.2 | Configuração | 5d | 2023-05-08 A | 2023-05-12 A | 10 | 100% |  | 2023-05-08 | 2023-05-12 | 5d |  | Gerente - Daniel Abreu Dantas; Consultor - módulo FI | 80h | 80h | 8,000 | 8,000 | 8,000 |
| 12 | 1.1.1.2.3 | Testes | 5d | 2023-05-15 A | 2023-05-19 A | 11 | 100% |  | 2023-05-15 | 2023-05-19 | 5d |  | Gerente - Daniel Abreu Dantas; Consultor - módulo FI | 80h | 80h | 8,000 | 8,000 | 8,000 |
| 13 | 1.1.1.2.4 | Validação | 5d | 2023-05-22 A | 2023-05-26 A | 12 | 100% |  | 2023-05-22 | 2023-05-26 | 5d |  | Gerente - Daniel Abreu Dantas; Consultor - módulo FI | 80h | 80h | 8,000 | 8,000 | 8,000 |
| 14 | 1.1.1.3 | **Contas a receber** | 19d | 2023-05-29 A | 2023-06-23 A |  | 100% |  | 2023-05-29 | 2023-06-23 | 19d |  |  | 320h | 320h | 32,000 | 32,000 | 32,000 |
| 15 | 1.1.1.3.1 | Levantamento | 5d | 2023-05-29 A | 2023-06-02 A | 13 | 100% |  | 2023-05-29 | 2023-06-02 | 5d |  | Gerente - Daniel Abreu Dantas; Consultor - módulo FI | 80h | 80h | 8,000 | 8,000 | 8,000 |
| 16 | 1.1.1.3.2 | Configuração | 5d | 2023-06-05 A | 2023-06-09 A | 15 | 100% |  | 2023-06-05 | 2023-06-09 | 5d |  | Gerente - Daniel Abreu Dantas; Consultor - módulo FI | 80h | 80h | 8,000 | 8,000 | 8,000 |
| 17 | 1.1.1.3.3 | Testes | 5d | 2023-06-12 A | 2023-06-16 A | 16 | 100% |  | 2023-06-12 | 2023-06-16 | 5d |  | Gerente - Daniel Abreu Dantas; Consultor - módulo FI | 80h | 80h | 8,000 | 8,000 | 8,000 |
| 18 | 1.1.1.3.4 | Validação | 5d | 2023-06-19 A | 2023-06-23 A | 17 | 100% |  | 2023-06-19 | 2023-06-23 | 5d |  | Gerente - Daniel Abreu Dantas; Consultor - módulo FI | 80h | 80h | 8,000 | 8,000 | 8,000 |
| 19 | 1.1.2 | **MM** | 40d | 2023-06-26 | 2023-08-18 |  |  |  | 2023-06-26 | 2023-08-18 | 40d | 0d |  | 640h |  | 64,000 | 64,000 |  |
| 20 | 1.1.2.1 | **Cadastro de Materiais** | 20d | 2023-06-26 | 2023-07-21 |  |  |  | 2023-06-26 | 2023-07-21 | 20d | 0d |  | 320h |  | 32,000 | 32,000 |  |
| 21 | 1.1.2.1.1 | Levantamento | 5d | 2023-06-26 | 2023-06-30 | 18 |  |  | 2023-06-26 | 2023-06-30 | 5d | 0d | Gerente - Daniel Abreu Dantas; Consultor - módulo MM | 80h |  | 8,000 | 8,000 |  |
| 22 | 1.1.2.1.2 | Configuração | 5d | 2023-07-03 | 2023-07-07 | 21 |  |  | 2023-07-03 | 2023-07-07 | 5d | 0d | Gerente - Daniel Abreu Dantas; Consultor - módulo MM | 80h |  | 8,000 | 8,000 |  |
| 23 | 1.1.2.1.3 | Testes | 5d | 2023-07-10 | 2023-07-14 | 22 |  |  | 2023-07-10 | 2023-07-14 | 5d | 0d | Gerente - Daniel Abreu Dantas; Consultor - módulo MM | 80h |  | 8,000 | 8,000 |  |
| 24 | 1.1.2.1.4 | Validação | 5d | 2023-07-17 | 2023-07-21 | 23 |  |  | 2023-07-17 | 2023-07-21 | 5d | 0d | Gerente - Daniel Abreu Dantas; Consultor - módulo MM | 80h |  | 8,000 | 8,000 |  |

| ID | WBS | Task | Duration | Start | Finish | Predecessors | Baseline start | Baseline finish | Baseline duration | Total slack | Resources | Work | Cost | Baseline cost |
| --- | --- | --- | --- | --- | --- | --- | --- | --- | --- | --- | --- | --- | --- | --- |
| 25 | 1.1.2.2 | **Requisições** | 20d | 2023-07-24 | 2023-08-18 |  | 2023-07-24 | 2023-08-18 | 20d | 0d |  | 320h | 32,000 | 32,000 |
| 26 | 1.1.2.2.1 | Levantamento | 5d | 2023-07-24 | 2023-07-28 | 24 | 2023-07-24 | 2023-07-28 | 5d | 0d | Gerente - Daniel Abreu Dantas; Consultor - módulo MM | 80h | 8,000 | 8,000 |
| 27 | 1.1.2.2.2 | Configuração | 5d | 2023-07-31 | 2023-08-04 | 26 | 2023-07-31 | 2023-08-04 | 5d | 0d | Gerente - Daniel Abreu Dantas; Consultor - módulo MM | 80h | 8,000 | 8,000 |
| 28 | 1.1.2.2.3 | Testes | 5d | 2023-08-07 | 2023-08-11 | 27 | 2023-08-07 | 2023-08-11 | 5d | 0d | Gerente - Daniel Abreu Dantas; Consultor - módulo MM | 80h | 8,000 | 8,000 |
| 29 | 1.1.2.2.4 | Validação | 5d | 2023-08-14 | 2023-08-18 | 28 | 2023-08-14 | 2023-08-18 | 5d | 0d | Gerente - Daniel Abreu Dantas; Consultor - módulo MM | 80h | 8,000 | 8,000 |
| 30 | 1.1.3 | **SD** | 40d | 2023-08-21 | 2023-10-13 |  | 2023-08-21 | 2023-10-13 | 40d | 0d |  | 640h | 64,000 | 64,000 |
| 31 | 1.1.3.1 | **Cadastro de Clientes** | 20d | 2023-08-21 | 2023-09-15 |  | 2023-08-21 | 2023-09-15 | 20d | 0d |  | 320h | 32,000 | 32,000 |
| 32 | 1.1.3.1.1 | Levantamento | 5d | 2023-08-21 | 2023-08-25 | 29 | 2023-08-21 | 2023-08-25 | 5d | 0d | Gerente - Daniel Abreu Dantas; Consultor - módulo SD | 80h | 8,000 | 8,000 |
| 33 | 1.1.3.1.2 | Configuração | 5d | 2023-08-28 | 2023-09-01 | 32 | 2023-08-28 | 2023-09-01 | 5d | 0d | Gerente - Daniel Abreu Dantas; Consultor - módulo SD | 80h | 8,000 | 8,000 |
| 34 | 1.1.3.1.3 | Testes | 5d | 2023-09-04 | 2023-09-08 | 33 | 2023-09-04 | 2023-09-08 | 5d | 0d | Gerente - Daniel Abreu Dantas; Consultor - módulo SD | 80h | 8,000 | 8,000 |
| 35 | 1.1.3.1.4 | Validação | 5d | 2023-09-11 | 2023-09-15 | 34 | 2023-09-11 | 2023-09-15 | 5d | 0d | Gerente - Daniel Abreu Dantas; Consultor - módulo SD | 80h | 8,000 | 8,000 |
| 36 | 1.1.3.2 | **Vendas** | 20d | 2023-09-18 | 2023-10-13 |  | 2023-09-18 | 2023-10-13 | 20d | 0d |  | 320h | 32,000 | 32,000 |
| 37 | 1.1.3.2.1 | Levantamento | 5d | 2023-09-18 | 2023-09-22 | 35 | 2023-09-18 | 2023-09-22 | 5d | 0d | Gerente - Daniel Abreu Dantas; Consultor - módulo SD | 80h | 8,000 | 8,000 |
| 38 | 1.1.3.2.2 | Configuração | 5d | 2023-09-25 | 2023-09-29 | 37 | 2023-09-25 | 2023-09-29 | 5d | 0d | Gerente - Daniel Abreu Dantas; Consultor - módulo SD | 80h | 8,000 | 8,000 |
| 39 | 1.1.3.2.3 | Testes | 5d | 2023-10-02 | 2023-10-06 | 38 | 2023-10-02 | 2023-10-06 | 5d | 0d | Gerente - Daniel Abreu Dantas; Consultor - módulo SD | 80h | 8,000 | 8,000 |
| 40 | 1.1.3.2.4 | Validação | 5d | 2023-10-09 | 2023-10-13 | 39 | 2023-10-09 | 2023-10-13 | 5d | 0d | Gerente - Daniel Abreu Dantas; Consultor - módulo SD | 80h | 8,000 | 8,000 |
| 41 | 1.2 | **Homologação** | 10d | 2023-10-16 | 2023-10-27 |  | 2023-10-16 | 2023-10-27 | 10d | 0d |  | 320h | 32,000 | 32,000 |
| 42 | 1.2.1 | Preparar ambiente de homologação | 5d | 2023-10-16 | 2023-10-20 | 40 | 2023-10-16 | 2023-10-20 | 5d | 0d | Gerente - Daniel Abreu Dantas; Consultor - módulo FI; Consultor - módulo MM; Consultor - módulo SD | 160h | 16,000 | 16,000 |
| 43 | 1.2.2 | Executar homologação | 5d | 2023-10-23 | 2023-10-27 | 42 | 2023-10-23 | 2023-10-27 | 5d | 0d | Gerente - Daniel Abreu Dantas; Consultor - módulo FI; Consultor - módulo MM; Consultor - módulo SD | 160h | 16,000 | 16,000 |
| 44 | 1.3 | **Migração** | 20d | 2023-10-30 | 2023-11-24 |  | 2023-10-30 | 2023-11-24 | 20d | 0d |  | 640h | 64,000 | 64,000 |
| 45 | 1.3.1 | Preparar treinamento | 5d | 2023-10-30 | 2023-11-03 | 43 | 2023-10-30 | 2023-11-03 | 5d | 0d | Gerente - Daniel Abreu Dantas; Consultor - módulo FI; Consultor - módulo MM; Consultor - módulo SD | 160h | 16,000 | 16,000 |
| 46 | 1.3.2 | Executar treinamento | 5d | 2023-11-06 | 2023-11-10 | 45 | 2023-11-06 | 2023-11-10 | 5d | 0d | Gerente - Daniel Abreu Dantas; Consultor - módulo FI; Consultor - módulo MM; Consultor - módulo SD | 160h | 16,000 | 16,000 |
| 47 | 1.3.3 | Preparar ambiente de produção | 5d | 2023-11-13 | 2023-11-17 | 46 | 2023-11-13 | 2023-11-17 | 5d | 0d | Gerente - Daniel Abreu Dantas; Consultor - módulo FI; Consultor - módulo MM; Consultor - módulo SD | 160h | 16,000 | 16,000 |
| 48 | 1.3.4 | Migrar objetos para produção | 5d | 2023-11-20 | 2023-11-24 | 47 | 2023-11-20 | 2023-11-24 | 5d | 0d | Gerente - Daniel Abreu Dantas; Consultor - módulo FI; Consultor - módulo MM; Consultor - módulo SD | 160h | 16,000 | 16,000 |
